How a schedule from MS Project changed from version to version. A marks actual dates.

## Version 1 (saved 2021-02-26)

Note of the change: Signed-off-by: jianghao <2564811788@163.com>

| ID | WBS | Task | Duration | Start | Finish | Predecessors | Total float |
| --- | --- | --- | --- | --- | --- | --- | --- |
| 1 | 1 | **装配** | 4.83d | 2021-03-01 00:00 | 2021-03-06 22:00 |  | 0d |
| 2 |  | 未上轨装配 | 2d | 2021-03-01 00:00 | 2021-03-03 00:00 |  | 0d |
| 3 |  | 上轨装配 | 17h | 2021-03-06 05:00 | 2021-03-06 22:00 | 9 | 0.71d |
| 4 | 2 | **功能实现阶段** | 17.38d? | 2021-03-03 05:00 | 2021-03-23 00:00 |  | 0d |
| 5 | 2.1 | **通信及信号测试** | 0.71d? | 2021-03-03 05:00 | 2021-03-03 22:00 | 2 | 0d |
| 6 |  | 传感器数值校验等 | 15h? | 2021-03-03 05:00 | 2021-03-03 20:00 |  | 0d |
| 7 |  | 行走缸/举升缸零点配置 | 2h? | 2021-03-03 20:00 | 2021-03-03 22:00 | 6 | 0d |
| 8 |  | 急停和恢复 | 17h | 2021-03-04 05:00 | 2021-03-04 22:00 | 5 | 0d |
| 9 | 2.3 | **一阶段测试（设备未上轨）** | 0.71d? | 2021-03-05 05:00 | 2021-03-05 22:00 | 8 | 0d |
| 10 |  | 行走缸/举升缸开环伸缩（不考虑死区) | 5h? | 2021-03-05 05:00 | 2021-03-05 10:00 | 8 | 0d |
| 11 |  | 行走缸/举升缸闭环伸缩（简单PI) | 2h? | 2021-03-05 10:00 | 2021-03-05 12:00 | 10 | 0d |
| 12 |  | 前后锁紧块锁销动作 | 1h? | 2021-03-05 12:00 | 2021-03-05 13:00 | 11 | 0d |
| 13 |  | 六种单步工艺校验 | 9h? | 2021-03-05 13:00 | 2021-03-05 22:00 | 12 | 0d |
| 14 | 2.4 | **二阶段测试（配合上轨装配/连接测试)** | 1.42d? | 2021-03-06 05:00 | 2021-03-07 22:00 | 9 | 0d |
| 15 |  | 配合机械/电气装配 | 17h? | 2021-03-06 05:00 | 2021-03-06 22:00 |  | 0d |
| 16 |  | 测试上轨后行走缸移动是否顺滑 | 17h? | 2021-03-07 05:00 | 2021-03-07 22:00 | 15 | 0d |
| 17 | 2.5 | **液压开环** | 0.71d? | 2021-03-08 05:00 | 2021-03-08 22:00 | 14, 3 | 0d |
| 18 |  | 行走缸/举升缸死区确认 | 5h? | 2021-03-08 05:00 | 2021-03-08 10:00 |  | 0d |
| 19 |  | 行走缸/举升缸最大速度确认 | 12h? | 2021-03-08 10:00 | 2021-03-08 22:00 | 18 | 0d |
| 20 | 2.6 | **锁销动作** | 0.71d? | 2021-03-09 05:00 | 2021-03-09 22:00 | 17 | 0d |
| 21 |  | 利用开环控制手动完成一次爬行 | 17h? | 2021-03-09 05:00 | 2021-03-09 22:00 |  | 0d |
| 22 |  | 确认一步和半步的孔距 | 17h? | 2021-03-09 05:00 | 2021-03-09 22:00 |  | 0d |
| 23 | 2.7 | **液压闭环** | 1.42d? | 2021-03-10 05:00 | 2021-03-11 22:00 | 20 | 0d |
| 24 |  | 行走缸闭环 | 17h? | 2021-03-10 05:00 | 2021-03-10 22:00 |  | 0d |
| 25 |  | 举升缸闭环 | 17h | 2021-03-11 05:00 | 2021-03-11 22:00 | 24 | 0d |
| 26 |  | 手动/单步调试（手动操作) | 2d? | 2021-03-12 00:00 | 2021-03-14 00:00 | 23 | 0d |
| 27 | 2.9 | **自动任务（单步操作)** | 3d? | 2021-03-14 00:00 | 2021-03-17 00:00 | 26 | 0d |
| 28 |  | 顺逆一步 | 12h? | 2021-03-14 00:00 | 2021-03-14 12:00 |  | 0d |
| 29 |  | 逆顺一步 | 12h? | 2021-03-14 12:00 | 2021-03-15 00:00 | 28 | 0d |
| 30 |  | 中逆半步 | 12h? | 2021-03-15 00:00 | 2021-03-15 12:00 | 29 | 0d |
| 31 |  | 逆中半步 | 12h? | 2021-03-15 12:00 | 2021-03-16 00:00 | 30 | 0d |
| 32 |  | 中顺半步 | 12h? | 2021-03-16 00:00 | 2021-03-16 12:00 | 31 | 0d |
| 33 |  | 顺中半步 | 12h? | 2021-03-16 12:00 | 2021-03-17 00:00 | 32 | 0d |
| 34 | 2.10 | **自动复合** | 3d? | 2021-03-17 00:00 | 2021-03-20 00:00 | 27 | 0d |
| 35 |  | 中逆移动 | 24h? | 2021-03-17 00:00 | 2021-03-18 00:00 | 27 | 0d |
| 36 |  | 逆中移动 | 12h? | 2021-03-18 00:00 | 2021-03-18 12:00 | 35 | 0d |
| 37 |  | 中顺移动 | 24h? | 2021-03-18 12:00 | 2021-03-19 12:00 | 36 | 0d |
| 38 |  | 顺中移动 | 12h? | 2021-03-19 12:00 | 2021-03-20 00:00 | 37 | 0d |
| 39 |  | 稳定性 | 72h | 2021-03-20 00:00 | 2021-03-23 00:00 | 34 | 0d |
| 40 |  | 完善优化阶段 | 14d? | 2021-03-23 00:00 | 2021-04-06 00:00 | 4 | 0d |

## Version 2 (saved 2021-03-01)

Note of the change: Signed-off-by: jianghao <2564811788@163.com>

Last finish 2021-04-06 → 2021-04-05 (-1d). Complete tasks 0 → 1.

Changed:

| ID | Task | Start | Finish | Duration | Complete | Total float | Other |
| --- | --- | --- | --- | --- | --- | --- | --- |
| 1 | **装配** | 2021-03-01 00:00 → 2021-03-01 A | 2021-03-06 22:00 → 2021-03-06 | 4.83d → 3.81d | 0% → 58% | 0d → 0.71d | baseline start none → 2021-03-01; baseline finish none → 2021-03-06 |
| 2 | 未上轨装配 | 2021-03-01 00:00 → 2021-03-01 A | 2021-03-03 00:00 → 2021-03-02 A (-1d) | 2d → 0.98d | 0% → 100% | 0d → none | constraint none → start no earlier than 2021-03-01; baseline start none → 2021-03-01; baseline finish none → 2021-03-03 |
| 3 | 上轨装配 | 2021-03-06 05:00 → 2021-03-05 (-1d) | 2021-03-06 22:00 → 2021-03-06 |  |  |  | baseline start none → 2021-03-06; baseline finish none → 2021-03-06 |
| 4 | **功能实现阶段** | 2021-03-03 05:00 → 2021-03-02 (-1d) | 2021-03-23 00:00 → 2021-03-22 (-1d) |  |  |  | baseline start none → 2021-03-03; baseline finish none → 2021-03-23 |
| 5 | **通信及信号测试** | 2021-03-03 05:00 → 2021-03-02 (-1d) | 2021-03-03 22:00 → 2021-03-03 |  |  |  | baseline start none → 2021-03-03; baseline finish none → 2021-03-03 |
| 6 | 传感器数值校验等 | 2021-03-03 05:00 → 2021-03-02 (-1d) | 2021-03-03 20:00 → 2021-03-03 |  |  |  | resources 姜浩; 电气人员 → 姜浩; 电气人员; 臧含; baseline start none → 2021-03-03; baseline finish none → 2021-03-03 |
| 7 | 行走缸/举升缸零点配置 | 2021-03-03 20:00 → 2021-03-03 | 2021-03-03 22:00 → 2021-03-03 |  |  |  | resources 姜浩 → 姜浩; 臧含; baseline start none → 2021-03-03; baseline finish none → 2021-03-03 |
| 8 | 急停和恢复 | 2021-03-04 05:00 → 2021-03-03 (-1d) | 2021-03-04 22:00 → 2021-03-04 |  |  |  | resources 姜浩; 电气人员 → 姜浩; 电气人员; 陆炎; baseline start none → 2021-03-04; baseline finish none → 2021-03-04 |
| 9 | **一阶段测试（设备未上轨）** | 2021-03-05 05:00 → 2021-03-04 (-1d) | 2021-03-05 22:00 → 2021-03-05 |  |  |  | resources none → 姜浩; 杨立志; baseline start none → 2021-03-05; baseline finish none → 2021-03-05 |
| 10 | 行走缸/举升缸开环伸缩（不考虑死区) | 2021-03-05 05:00 → 2021-03-04 (-1d) | 2021-03-05 10:00 → 2021-03-04 (-1d) |  |  |  | baseline start none → 2021-03-05; baseline finish none → 2021-03-05 |
| 11 | 行走缸/举升缸闭环伸缩（简单PI) | 2021-03-05 10:00 → 2021-03-04 (-1d) | 2021-03-05 12:00 → 2021-03-04 (-1d) |  |  |  | baseline start none → 2021-03-05; baseline finish none → 2021-03-05 |
| 12 | 前后锁紧块锁销动作 | 2021-03-05 12:00 → 2021-03-04 (-1d) | 2021-03-05 13:00 → 2021-03-04 (-1d) |  |  |  | baseline start none → 2021-03-05; baseline finish none → 2021-03-05 |
| 13 | 六种单步工艺校验 | 2021-03-05 13:00 → 2021-03-04 (-1d) | 2021-03-05 22:00 → 2021-03-05 |  |  |  | baseline start none → 2021-03-05; baseline finish none → 2021-03-05 |
| 14 | **二阶段测试（配合上轨装配/连接测试)** | 2021-03-06 05:00 → 2021-03-05 (-1d) | 2021-03-07 22:00 → 2021-03-07 |  |  |  | baseline start none → 2021-03-06; baseline finish none → 2021-03-07 |
| 15 | 配合机械/电气装配 | 2021-03-06 05:00 → 2021-03-05 (-1d) | 2021-03-06 22:00 → 2021-03-06 |  |  |  | resources none → 杨立志; 臧含; baseline start none → 2021-03-06; baseline finish none → 2021-03-06 |
| 16 | 测试上轨后行走缸移动是否顺滑 | 2021-03-07 05:00 → 2021-03-06 (-1d) | 2021-03-07 22:00 → 2021-03-07 |  |  |  | resources none → 姜浩; 陆炎; baseline start none → 2021-03-07; baseline finish none → 2021-03-07 |
| 17 | **液压开环** | 2021-03-08 05:00 → 2021-03-07 (-1d) | 2021-03-08 22:00 → 2021-03-08 |  |  |  | resources none → 姜浩; 陈田风; baseline start none → 2021-03-08; baseline finish none → 2021-03-08 |
| 18 | 行走缸/举升缸死区确认 | 2021-03-08 05:00 → 2021-03-07 (-1d) | 2021-03-08 10:00 → 2021-03-07 (-1d) |  |  |  | baseline start none → 2021-03-08; baseline finish none → 2021-03-08 |
| 19 | 行走缸/举升缸最大速度确认 | 2021-03-08 10:00 → 2021-03-07 (-1d) | 2021-03-08 22:00 → 2021-03-08 |  |  |  | baseline start none → 2021-03-08; baseline finish none → 2021-03-08 |
| 20 | **锁销动作** | 2021-03-09 05:00 → 2021-03-08 (-1d) | 2021-03-09 22:00 → 2021-03-09 |  |  |  | resources none → 液压人员; 陆炎; 姜浩; baseline start none → 2021-03-09; baseline finish none → 2021-03-09 |
| 21 | 利用开环控制手动完成一次爬行 | 2021-03-09 05:00 → 2021-03-08 (-1d) | 2021-03-09 22:00 → 2021-03-09 |  |  |  | resources 液压人员 → none; baseline start none → 2021-03-09; baseline finish none → 2021-03-09 |
| 22 | 确认一步和半步的孔距 | 2021-03-09 05:00 → 2021-03-08 (-1d) | 2021-03-09 22:00 → 2021-03-09 |  |  |  | baseline start none → 2021-03-09; baseline finish none → 2021-03-09 |
| 23 | **液压闭环** | 2021-03-10 05:00 → 2021-03-09 (-1d) | 2021-03-11 22:00 → 2021-03-11 |  |  |  | resources none → 姜浩; 杨立志; 臧含; baseline start none → 2021-03-10; baseline finish none → 2021-03-11 |
| 24 | 行走缸闭环 | 2021-03-10 05:00 → 2021-03-09 (-1d) | 2021-03-10 22:00 → 2021-03-10 |  |  |  | baseline start none → 2021-03-10; baseline finish none → 2021-03-10 |
| 25 | 举升缸闭环 | 2021-03-11 05:00 → 2021-03-10 (-1d) | 2021-03-11 22:00 → 2021-03-11 |  |  |  | baseline start none → 2021-03-11; baseline finish none → 2021-03-11 |
| 26 | 手动/单步调试（手动操作) | 2021-03-12 00:00 → 2021-03-11 (-1d) | 2021-03-14 00:00 → 2021-03-13 (-1d) |  |  |  | baseline start none → 2021-03-12; baseline finish none → 2021-03-14 |
| 27 | **自动任务（单步操作)** | 2021-03-14 00:00 → 2021-03-13 (-1d) | 2021-03-17 00:00 → 2021-03-16 (-1d) |  |  |  | baseline start none → 2021-03-14; baseline finish none → 2021-03-17 |
| 28 | 顺逆一步 | 2021-03-14 00:00 → 2021-03-13 (-1d) | 2021-03-14 12:00 → 2021-03-14 |  |  |  | resources none → 姜浩; 陆炎; baseline start none → 2021-03-14; baseline finish none → 2021-03-14 |
| 29 | 逆顺一步 | 2021-03-14 12:00 → 2021-03-14 | 2021-03-15 00:00 → 2021-03-14 (-1d) |  |  |  | resources none → 杨立志; 臧含; baseline start none → 2021-03-14; baseline finish none → 2021-03-15 |
| 30 | 中逆半步 | 2021-03-15 00:00 → 2021-03-14 (-1d) | 2021-03-15 12:00 → 2021-03-15 |  |  |  | resources none → 姜浩; 陆炎; baseline start none → 2021-03-15; baseline finish none → 2021-03-15 |
| 31 | 逆中半步 | 2021-03-15 12:00 → 2021-03-15 | 2021-03-16 00:00 → 2021-03-15 (-1d) |  |  |  | resources none → 杨立志; 臧含; baseline start none → 2021-03-15; baseline finish none → 2021-03-16 |
| 32 | 中顺半步 | 2021-03-16 00:00 → 2021-03-15 (-1d) | 2021-03-16 12:00 → 2021-03-16 |  |  |  | resources none → 姜浩; 陆炎; baseline start none → 2021-03-16; baseline finish none → 2021-03-16 |
| 33 | 顺中半步 | 2021-03-16 12:00 → 2021-03-16 | 2021-03-17 00:00 → 2021-03-16 (-1d) |  |  |  | resources none → 杨立志; 臧含; baseline start none → 2021-03-16; baseline finish none → 2021-03-17 |
| 34 | **自动复合** | 2021-03-17 00:00 → 2021-03-16 (-1d) | 2021-03-20 00:00 → 2021-03-19 (-1d) |  |  |  | baseline start none → 2021-03-17; baseline finish none → 2021-03-20 |
| 35 | 中逆移动 | 2021-03-17 00:00 → 2021-03-16 (-1d) | 2021-03-18 00:00 → 2021-03-17 (-1d) |  |  |  | resources none → 姜浩; 陆炎; baseline start none → 2021-03-17; baseline finish none → 2021-03-18 |
| 36 | 逆中移动 | 2021-03-18 00:00 → 2021-03-17 (-1d) | 2021-03-18 12:00 → 2021-03-18 |  |  |  | resources none → 杨立志; 臧含; baseline start none → 2021-03-18; baseline finish none → 2021-03-18 |
| 37 | 中顺移动 | 2021-03-18 12:00 → 2021-03-18 | 2021-03-19 12:00 → 2021-03-19 |  |  |  | resources none → 姜浩; 陆炎; baseline start none → 2021-03-18; baseline finish none → 2021-03-19 |
| 38 | 顺中移动 | 2021-03-19 12:00 → 2021-03-19 | 2021-03-20 00:00 → 2021-03-19 (-1d) |  |  |  | resources none → 杨立志; 臧含; baseline start none → 2021-03-19; baseline finish none → 2021-03-20 |
| 39 | 稳定性 | 2021-03-20 00:00 → 2021-03-19 (-1d) | 2021-03-23 00:00 → 2021-03-22 (-1d) |  |  |  | resources none → 电气人员; baseline start none → 2021-03-20; baseline finish none → 2021-03-23 |
| 40 | 完善优化阶段 | 2021-03-23 00:00 → 2021-03-22 (-1d) | 2021-04-06 00:00 → 2021-04-05 (-1d) |  |  |  | baseline start none → 2021-03-23; baseline finish none → 2021-04-06 |

## Version 3 (saved 2021-03-04)

Note of the change: Signed-off-by: jianghao <2564811788@163.com>

Last finish 2021-04-05 → 2021-04-04 (-1d). Complete tasks 1 → 8.

Added:

| ID | Task | Duration | Start | Finish | Predecessors |
| --- | --- | --- | --- | --- | --- |
| 19 | 行走缸死区确认 | 24h? | 2021-03-04 21:00 | 2021-03-06 11:00 | 18, 3 |

Changed:

| ID | Task | Start | Finish | Duration | Complete | Total float | Predecessors | Other |
| --- | --- | --- | --- | --- | --- | --- | --- | --- |
| 1 | **装配** | 2021-03-01 A → 2021-03-01 14:00 A | 2021-03-06 → 2021-03-04 21:00 (-2d) | 3.81d → 2.79d |  | 0.71d → 0d |  | baseline start 2021-03-01 → 2021-03-01 00:00; baseline finish 2021-03-06 → 2021-03-06 22:00 |
| 2 | 未上轨装配 | 2021-03-01 A → 2021-03-01 14:00 A | 2021-03-02 A → 2021-03-02 13:30 A |  |  |  |  | constraint start no earlier than 2021-03-01 → start no earlier than 2021-03-01 00:00; baseline start 2021-03-01 → 2021-03-01 00:00; baseline finish 2021-03-03 → 2021-03-03 00:00 |
| 3 | 上轨装配 | 2021-03-05 → 2021-03-03 21:00 (-2d) | 2021-03-06 → 2021-03-04 21:00 (-2d) |  |  | 0.71d → 0d |  | baseline start 2021-03-06 → 2021-03-06 05:00; baseline finish 2021-03-06 → 2021-03-06 22:00 |
| 4 | **功能实现阶段** | 2021-03-02 → 2021-03-03 08:00 A (+1d) | 2021-03-22 → 2021-03-21 15:00 (-1d) | 17.38d? → 15.88d? | 0% → 3% |  |  | baseline start 2021-03-03 → 2021-03-03 05:00; baseline finish 2021-03-23 → 2021-03-23 00:00 |
| 5 | **通信及信号测试** | 2021-03-02 → 2021-03-03 08:00 A (+1d) | 2021-03-03 → 2021-03-06 06:00 (+3d) | 0.71d? → 2.04d? | 0% → 50% | 0d → 0.71d |  | baseline start 2021-03-03 → 2021-03-03 05:00; baseline finish 2021-03-03 → 2021-03-03 22:00 |
| 6 | 传感器数值校验等 | 2021-03-02 → 2021-03-03 08:00 A (+1d) | 2021-03-03 → 2021-03-03 10:00 A | 15h? → 2h? | 0% → 100% | 0d → none |  | baseline start 2021-03-03 → 2021-03-03 05:00; baseline finish 2021-03-03 → 2021-03-03 20:00 |
| 7 | 行走缸/举升缸零点配置 | 2021-03-03 → 2021-03-05 21:00 (+2d) | 2021-03-03 → 2021-03-06 06:00 (+3d) |  |  | 0d → 13.83d | 6 → 16 | baseline start 2021-03-03 → 2021-03-03 20:00; baseline finish 2021-03-03 → 2021-03-03 22:00 |
| 8 | 急停和恢复 | 2021-03-03 → 2021-03-03 11:00 A | 2021-03-04 → 2021-03-03 11:30 A (-1d) | 17h → 0.5h | 0% → 100% | 0d → none | 5 → 6 | baseline start 2021-03-04 → 2021-03-04 05:00; baseline finish 2021-03-04 → 2021-03-04 22:00 |
| 9 | **一阶段测试（设备未上轨）** | 2021-03-04 → 2021-03-03 11:30 A (-1d) | 2021-03-05 → 2021-03-03 21:00 A (-2d) | 0.71d? → 0.4d? | 0% → 100% | 0d → none |  | baseline start 2021-03-05 → 2021-03-05 05:00; baseline finish 2021-03-05 → 2021-03-05 22:00 |
| 10 | 行走缸/举升缸开环伸缩（不考虑死区) | 2021-03-04 → 2021-03-03 11:30 A (-1d) | 2021-03-04 → 2021-03-03 12:00 A (-1d) | 5h? → 0.5h? | 0% → 100% | 0d → none |  | baseline start 2021-03-05 → 2021-03-05 05:00; baseline finish 2021-03-05 → 2021-03-05 10:00 |
| 11 | 行走缸/举升缸闭环伸缩（简单PI) | 2021-03-04 → 2021-03-03 17:00 A (-1d) | 2021-03-04 → 2021-03-03 18:00 A (-1d) | 2h? → 1h? | 0% → 100% | 0d → none |  | baseline start 2021-03-05 → 2021-03-05 10:00; baseline finish 2021-03-05 → 2021-03-05 12:00 |
| 12 | 前后锁紧块锁销动作 | 2021-03-04 → 2021-03-03 18:00 A (-1d) | 2021-03-04 → 2021-03-03 19:30 A (-1d) | 1h? → 1.5h? | 0% → 100% | 0d → none |  | baseline start 2021-03-05 → 2021-03-05 12:00; baseline finish 2021-03-05 → 2021-03-05 13:00 |
| 13 | 六种单步工艺校验 | 2021-03-04 → 2021-03-03 19:30 A (-1d) | 2021-03-05 → 2021-03-03 21:00 A (-2d) | 9h? → 1.5h? | 0% → 100% | 0d → none |  | baseline start 2021-03-05 → 2021-03-05 13:00; baseline finish 2021-03-05 → 2021-03-05 22:00 |
| 14 | **二阶段测试（配合上轨装配/连接测试)** | 2021-03-05 → 2021-03-03 21:00 (-2d) | 2021-03-07 → 2021-03-05 21:00 (-2d) |  |  | 0d → 0.71d |  | baseline start 2021-03-06 → 2021-03-06 05:00; baseline finish 2021-03-07 → 2021-03-07 22:00 |
| 15 | 配合机械/电气装配（含锁销插入实验) | 2021-03-05 → 2021-03-03 21:00 (-2d) | 2021-03-06 → 2021-03-04 21:00 (-2d) |  |  | 0d → 13.83d |  | was named 配合机械/电气装配; resources 杨立志; 臧含 → 杨立志; 臧含; 姜浩; baseline start 2021-03-06 → 2021-03-06 05:00; baseline finish 2021-03-06 → 2021-03-06 22:00 |
| 16 | 测试上轨后行走缸移动是否顺滑 | 2021-03-06 → 2021-03-04 21:00 (-2d) | 2021-03-07 → 2021-03-05 21:00 (-2d) |  |  | 0d → 13.83d |  | baseline start 2021-03-07 → 2021-03-07 05:00; baseline finish 2021-03-07 → 2021-03-07 22:00 |
| 17 | **液压开环** | 2021-03-07 → 2021-03-04 08:00 A (-3d) | 2021-03-08 → 2021-03-07 06:00 (-1d) | 0.71d? → 2.04d? | 0% → 11% |  | 14, 3 → 7 | baseline start 2021-03-08 → 2021-03-08 05:00; baseline finish 2021-03-08 → 2021-03-08 22:00 |
| 18 | 举升缸死区确认 | 2021-03-07 → 2021-03-04 08:00 A (-3d) | 2021-03-07 → 2021-03-04 12:30 A (-3d) | 5h? → 4.5h? | 0% → 100% | 0d → none | none → 13 | was named 行走缸/举升缸死区确认; baseline start 2021-03-08 → 2021-03-08 05:00; baseline finish 2021-03-08 → 2021-03-08 10:00 |
| 20 | 行走缸/举升缸最大速度确认 | 2021-03-07 → 2021-03-06 11:00 (-1d) | 2021-03-08 → 2021-03-07 06:00 (-1d) |  |  |  | 18 → 19 | baseline start 2021-03-08 → 2021-03-08 10:00; baseline finish 2021-03-08 → 2021-03-08 22:00 |
| 21 | **锁销动作** | 2021-03-08 → 2021-03-07 06:00 (-1d) | 2021-03-09 → 2021-03-08 06:00 (-1d) |  |  |  |  | baseline start 2021-03-09 → 2021-03-09 05:00; baseline finish 2021-03-09 → 2021-03-09 22:00 |
| 22 | 利用开环控制手动完成一次爬行 | 2021-03-08 → 2021-03-07 06:00 (-1d) | 2021-03-09 → 2021-03-08 06:00 (-1d) |  |  |  | none → 7 | baseline start 2021-03-09 → 2021-03-09 05:00; baseline finish 2021-03-09 → 2021-03-09 22:00 |
| 23 | 确认一步和半步的孔距 | 2021-03-08 → 2021-03-07 06:00 (-1d) | 2021-03-09 → 2021-03-08 06:00 (-1d) |  |  |  |  | baseline start 2021-03-09 → 2021-03-09 05:00; baseline finish 2021-03-09 → 2021-03-09 22:00 |
| 24 | **液压闭环** | 2021-03-09 → 2021-03-08 06:00 (-1d) | 2021-03-11 → 2021-03-10 06:00 (-1d) |  |  |  |  | baseline start 2021-03-10 → 2021-03-10 05:00; baseline finish 2021-03-11 → 2021-03-11 22:00 |
| 25 | 行走缸闭环 | 2021-03-09 → 2021-03-08 06:00 (-1d) | 2021-03-10 → 2021-03-09 06:00 (-1d) |  |  |  |  | baseline start 2021-03-10 → 2021-03-10 05:00; baseline finish 2021-03-10 → 2021-03-10 22:00 |
| 26 | 举升缸闭环 | 2021-03-10 → 2021-03-09 06:00 (-1d) | 2021-03-11 → 2021-03-10 06:00 (-1d) |  |  |  |  | baseline start 2021-03-11 → 2021-03-11 05:00; baseline finish 2021-03-11 → 2021-03-11 22:00 |
| 27 | 手动/单步调试（手动操作) | 2021-03-11 → 2021-03-10 06:00 (-1d) | 2021-03-13 → 2021-03-12 15:00 (-1d) |  |  |  |  | baseline start 2021-03-12 → 2021-03-12 00:00; baseline finish 2021-03-14 → 2021-03-14 00:00 |
| 28 | **自动任务（单步操作)** | 2021-03-13 → 2021-03-12 15:00 (-1d) | 2021-03-16 → 2021-03-15 15:00 (-1d) |  |  |  |  | baseline start 2021-03-14 → 2021-03-14 00:00; baseline finish 2021-03-17 → 2021-03-17 00:00 |
| 29 | 顺逆一步 | 2021-03-13 → 2021-03-12 15:00 (-1d) | 2021-03-14 → 2021-03-13 03:00 (-1d) |  |  |  |  | baseline start 2021-03-14 → 2021-03-14 00:00; baseline finish 2021-03-14 → 2021-03-14 12:00 |
| 30 | 逆顺一步 | 2021-03-14 → 2021-03-13 03:00 (-1d) | 2021-03-14 → 2021-03-13 15:00 (-1d) |  |  |  |  | baseline start 2021-03-14 → 2021-03-14 12:00; baseline finish 2021-03-15 → 2021-03-15 00:00 |
| 31 | 中逆半步 | 2021-03-14 → 2021-03-13 15:00 (-1d) | 2021-03-15 → 2021-03-14 03:00 (-1d) |  |  |  |  | baseline start 2021-03-15 → 2021-03-15 00:00; baseline finish 2021-03-15 → 2021-03-15 12:00 |
| 32 | 逆中半步 | 2021-03-15 → 2021-03-14 03:00 (-1d) | 2021-03-15 → 2021-03-14 15:00 (-1d) |  |  |  |  | baseline start 2021-03-15 → 2021-03-15 12:00; baseline finish 2021-03-16 → 2021-03-16 00:00 |
| 33 | 中顺半步 | 2021-03-15 → 2021-03-14 15:00 (-1d) | 2021-03-16 → 2021-03-15 03:00 (-1d) |  |  |  |  | baseline start 2021-03-16 → 2021-03-16 00:00; baseline finish 2021-03-16 → 2021-03-16 12:00 |
| 34 | 顺中半步 | 2021-03-16 → 2021-03-15 03:00 (-1d) | 2021-03-16 → 2021-03-15 15:00 (-1d) |  |  |  |  | baseline start 2021-03-16 → 2021-03-16 12:00; baseline finish 2021-03-17 → 2021-03-17 00:00 |
| 35 | **自动复合** | 2021-03-16 → 2021-03-15 15:00 (-1d) | 2021-03-19 → 2021-03-18 15:00 (-1d) |  |  |  |  | baseline start 2021-03-17 → 2021-03-17 00:00; baseline finish 2021-03-20 → 2021-03-20 00:00 |
| 36 | 中逆移动 | 2021-03-16 → 2021-03-15 15:00 (-1d) | 2021-03-17 → 2021-03-16 15:00 (-1d) |  |  |  |  | baseline start 2021-03-17 → 2021-03-17 00:00; baseline finish 2021-03-18 → 2021-03-18 00:00 |
| 37 | 逆中移动 | 2021-03-17 → 2021-03-16 15:00 (-1d) | 2021-03-18 → 2021-03-17 03:00 (-1d) |  |  |  |  | baseline start 2021-03-18 → 2021-03-18 00:00; baseline finish 2021-03-18 → 2021-03-18 12:00 |
| 38 | 中顺移动 | 2021-03-18 → 2021-03-17 03:00 (-1d) | 2021-03-19 → 2021-03-18 03:00 (-1d) |  |  |  |  | baseline start 2021-03-18 → 2021-03-18 12:00; baseline finish 2021-03-19 → 2021-03-19 12:00 |
| 39 | 顺中移动 | 2021-03-19 → 2021-03-18 03:00 (-1d) | 2021-03-19 → 2021-03-18 15:00 (-1d) |  |  |  |  | baseline start 2021-03-19 → 2021-03-19 12:00; baseline finish 2021-03-20 → 2021-03-20 00:00 |
| 40 | 稳定性 | 2021-03-19 → 2021-03-18 15:00 (-1d) | 2021-03-22 → 2021-03-21 15:00 (-1d) |  |  |  |  | baseline start 2021-03-20 → 2021-03-20 00:00; baseline finish 2021-03-23 → 2021-03-23 00:00 |
| 41 | 完善优化阶段 | 2021-03-22 → 2021-03-21 15:00 (-1d) | 2021-04-05 → 2021-04-04 15:00 (-1d) |  |  |  |  | baseline start 2021-03-23 → 2021-03-23 00:00; baseline finish 2021-04-06 → 2021-04-06 00:00 |

## Version 4 (saved 2021-03-04)

Note of the change: Signed-off-by: jianghao <2564811788@163.com>

Last finish stays 2021-04-04. Complete tasks 8 → 11.

Changed:

| ID | Task | Start | Finish | Duration | Complete | Total float | Other |
| --- | --- | --- | --- | --- | --- | --- | --- |
| 1 | **装配** |  | 2021-03-04 21:00 → 2021-03-04 19:30 A | 2.79d → 2.73d | 58% → 100% | 0d → none |  |
| 3 | 上轨装配 | 2021-03-03 21:00 → 2021-03-04 18:00 A (+1d) | 2021-03-04 21:00 → 2021-03-04 19:30 A | 17h → 1.5h | 0% → 100% | 0d → none |  |
| 4 | **功能实现阶段** |  | 2021-03-21 15:00 → 2021-03-21 13:30 | 15.88d? → 15.81d? |  |  |  |
| 5 | **通信及信号测试** |  | 2021-03-06 06:00 → 2021-03-04 21:00 A (-2d) | 2.04d? → 1.25d? | 50% → 100% | 0.71d → none |  |
| 7 | 行走缸/举升缸零点配置 | 2021-03-05 21:00 → 2021-03-04 20:30 A (-1d) | 2021-03-06 06:00 → 2021-03-04 21:00 A (-2d) | 2h? → 0.5h? | 0% → 100% | 13.83d → none |  |
| 14 | **二阶段测试（配合上轨装配/连接测试)** | 2021-03-03 21:00 → 2021-03-04 19:30 A (+1d) | 2021-03-05 21:00 → 2021-03-05 20:30 | 1.42d? → 0.75d? | 0% → 6% | 0.71d → 13.88d |  |
| 15 | 配合机械/电气装配（含锁销插入实验) | 2021-03-03 21:00 → 2021-03-04 19:30 A (+1d) | 2021-03-04 21:00 → 2021-03-04 20:30 A | 17h? → 1h? | 0% → 100% | 13.83d → none | resources 杨立志; 臧含; 姜浩 → 姜浩; 陆炎 |
| 16 | 测试上轨后行走缸移动是否顺滑 | 2021-03-04 21:00 → 2021-03-04 20:30 | 2021-03-05 21:00 → 2021-03-05 20:30 |  |  | 13.83d → 13.88d |  |
| 17 | **液压开环** |  | 2021-03-07 06:00 → 2021-03-06 21:30 (-1d) | 2.04d? → 1.98d? |  |  |  |
| 19 | 行走缸死区确认 | 2021-03-04 21:00 → 2021-03-04 19:30 | 2021-03-06 11:00 → 2021-03-06 09:30 |  |  |  |  |
| 20 | 行走缸/举升缸最大速度确认 | 2021-03-06 11:00 → 2021-03-06 09:30 | 2021-03-07 06:00 → 2021-03-06 21:30 (-1d) |  |  |  |  |
| 21 | **锁销动作** | 2021-03-07 06:00 → 2021-03-06 21:30 (-1d) | 2021-03-08 06:00 → 2021-03-07 21:30 (-1d) |  |  |  |  |
| 22 | 利用开环控制手动完成一次爬行 | 2021-03-07 06:00 → 2021-03-06 21:30 (-1d) | 2021-03-08 06:00 → 2021-03-07 21:30 (-1d) |  |  |  |  |
| 23 | 确认一步和半步的孔距 | 2021-03-07 06:00 → 2021-03-06 21:30 (-1d) | 2021-03-08 06:00 → 2021-03-07 21:30 (-1d) |  |  |  |  |
| 24 | **液压闭环** | 2021-03-08 06:00 → 2021-03-07 21:30 (-1d) | 2021-03-10 06:00 → 2021-03-09 21:30 (-1d) |  |  |  |  |
| 25 | 行走缸闭环 | 2021-03-08 06:00 → 2021-03-07 21:30 (-1d) | 2021-03-09 06:00 → 2021-03-08 21:30 (-1d) |  |  |  |  |
| 26 | 举升缸闭环 | 2021-03-09 06:00 → 2021-03-08 21:30 (-1d) | 2021-03-10 06:00 → 2021-03-09 21:30 (-1d) |  |  |  |  |
| 27 | 手动/单步调试（手动操作) | 2021-03-10 06:00 → 2021-03-09 21:30 (-1d) | 2021-03-12 15:00 → 2021-03-12 13:30 |  |  |  |  |
| 28 | **自动任务（单步操作)** | 2021-03-12 15:00 → 2021-03-12 13:30 | 2021-03-15 15:00 → 2021-03-15 13:30 |  |  |  |  |
| 29 | 顺逆一步 | 2021-03-12 15:00 → 2021-03-12 13:30 | 2021-03-13 03:00 → 2021-03-13 01:30 |  |  |  |  |
| 30 | 逆顺一步 | 2021-03-13 03:00 → 2021-03-13 01:30 | 2021-03-13 15:00 → 2021-03-13 13:30 |  |  |  |  |
| 31 | 中逆半步 | 2021-03-13 15:00 → 2021-03-13 13:30 | 2021-03-14 03:00 → 2021-03-14 01:30 |  |  |  |  |
| 32 | 逆中半步 | 2021-03-14 03:00 → 2021-03-14 01:30 | 2021-03-14 15:00 → 2021-03-14 13:30 |  |  |  |  |
| 33 | 中顺半步 | 2021-03-14 15:00 → 2021-03-14 13:30 | 2021-03-15 03:00 → 2021-03-15 01:30 |  |  |  |  |
| 34 | 顺中半步 | 2021-03-15 03:00 → 2021-03-15 01:30 | 2021-03-15 15:00 → 2021-03-15 13:30 |  |  |  |  |
| 35 | **自动复合** | 2021-03-15 15:00 → 2021-03-15 13:30 | 2021-03-18 15:00 → 2021-03-18 13:30 |  |  |  |  |
| 36 | 中逆移动 | 2021-03-15 15:00 → 2021-03-15 13:30 | 2021-03-16 15:00 → 2021-03-16 13:30 |  |  |  |  |
| 37 | 逆中移动 | 2021-03-16 15:00 → 2021-03-16 13:30 | 2021-03-17 03:00 → 2021-03-17 01:30 |  |  |  |  |
| 38 | 中顺移动 | 2021-03-17 03:00 → 2021-03-17 01:30 | 2021-03-18 03:00 → 2021-03-18 01:30 |  |  |  |  |
| 39 | 顺中移动 | 2021-03-18 03:00 → 2021-03-18 01:30 | 2021-03-18 15:00 → 2021-03-18 13:30 |  |  |  |  |
| 40 | 稳定性 | 2021-03-18 15:00 → 2021-03-18 13:30 | 2021-03-21 15:00 → 2021-03-21 13:30 |  |  |  |  |
| 41 | 完善优化阶段 | 2021-03-21 15:00 → 2021-03-21 13:30 | 2021-04-04 15:00 → 2021-04-04 13:30 |  |  |  |  |
